# 全线上税务贷项目计划-new

Schedule from MS Project, 2017-12-07 to 2018-03-27.
nbcb

## Calendars

- 标准: Mon-Fri 08:00-12:00, 13:00-17:00; Sat-Sun off.

## Resources

| Resource |
| --- |
| 张柳宁 |
| 钟灵杰 |
| 华栋 |
| 王茜茜 |
| 黄明明 |
| 杨贤清 |
| 徐晓宁 |
| 史庭辉 |
| 佘晖 |
| 吕鑫 |
| 何鹏举 |
| 陈颖 |
| 应晓俊 |
| 徐丰 |
| 王子川 |
| 周辉 |
| 应晓俊\卓徐杰 |
| 卓徐杰 |
| 陈耀宇 |
| 二期 |

## Schedule

| ID | WBS | Task | Type | Duration | Start | Finish | Predecessors | Total slack | Free slack | Constraint | Resources | Work |
| --- | --- | --- | --- | --- | --- | --- | --- | --- | --- | --- | --- | --- |
| 1 | 1 | **宁波人保-上海银行贷项目** |  | 79d | 2017-12-07 | 2018-03-27 |  |  |  |  |  | 64h |
| 2 | 1.1 | 合同签订 |  | 1d | 2018-01-05 | 2018-01-05 |  | 15d | 0d | start no earlier than 2018-01-05 |  |  |
| 3 | 1.2 | 项目小组成立 |  | 1d | 2018-01-05 | 2018-01-05 |  | 57d |  | start no earlier than 2018-01-05 |  |  |
| 4 | 1.3 | **需求分析** |  | 5d | 2018-01-08 | 2018-01-12 |  | 15d |  |  |  |  |
| 5 | 1.3.1 | 业务需求规则说明书准出 |  | 5d | 2018-01-08 | 2018-01-12 | 2 | 15d | 0d |  |  |  |
| 6 | 1.3.2 | 需求文档准出 | milestone | 0d | 2018-01-12 | 2018-01-12 | 5 | 52d |  |  |  |  |
| 7 | 1.4 | **系统设计** |  | 8d | 2018-01-08 | 2018-01-17 |  | 49d |  |  |  |  |
| 8 | 1.4.1 | 业务规则配置设计评审 |  | 5d | 2018-01-08 | 2018-01-12 | 2 | 49d | 0d |  |  |  |
| 9 | 1.4.2 | 接口设计 |  | 1d | 2018-01-15 | 2018-01-15 | 8 | 49d | 0d |  |  |  |
| 10 | 1.4.3 | 系统整体设计方案评审 |  | 2d | 2018-01-16 | 2018-01-17 | 9 | 49d |  |  |  |  |
| 11 | 1.5 | **系统开发** |  | 50d | 2017-12-07 | 2018-02-14 |  | 18d |  |  |  | 64h |
| 12 | 1.5.1 | 各系统接口文档确认 |  | 1d | 2017-12-07 | 2017-12-07 |  | 78d |  |  |  |  |
| 13 | 1.5.2 | **规则平台开发** |  | 10d | 2018-01-02 | 2018-01-15 |  | 0d |  |  |  |  |
| 14 | 1.5.2.1 | **近期工作安排** |  | 10d | 2018-01-02 | 2018-01-15 |  |  |  |  |  |  |
| 15 | 1.5.2.1.1 | 需求整理 | manual | 5d | 2018-01-02 | 2018-01-08 |  |  |  |  |  |  |
| 16 | 1.5.2.1.2 | 系统设计初稿 | manual | 5d | 2018-01-08 | 2018-01-12 |  |  |  |  |  |  |
| 17 | 1.5.2.1.3 | 环境梳理 | manual | 2d | 2018-01-08 | 2018-01-09 | 3 |  |  |  |  |  |
| 18 | 1.5.2.1.4 | 6个接口开发 | manual | 10d | 2018-01-02 | 2018-01-15 |  |  |  |  |  |  |
| 19 | 1.5.3 | 规则开发配置 |  | 8d | 2017-12-07 | 2017-12-18 |  | 71d |  |  |  |  |
| 20 | 1.5.4 | 业务规则配置 |  | 3d | 2017-12-07 | 2017-12-11 |  | 76d |  |  |  |  |
| 21 | 1.5.5 | 接口开发1 | manual | 10d | 2018-01-02 | 2018-01-15 |  |  |  |  |  |  |
| 22 | 1.5.6 | 接口开发2 | manual | 5d | 2018-01-16 | 2018-01-22 | 21 |  |  |  |  |  |
| 23 | 1.5.7 | 渠道开发 |  | 6d | 2017-12-07 | 2017-12-14 |  | 73d |  |  |  |  |
| 24 | 1.5.8 | **上海银行信贷开发** |  | 23d | 2018-01-15 | 2018-02-14 |  | 27d |  |  |  | 64h |
| 25 | 1.5.8.1 | 信贷流程开发 |  | 23d | 2018-01-15 | 2018-02-14 | 5 | 29d |  |  |  |  |
| 26 | 1.5.8.2 | 信贷接口开发 |  | 8d | 2018-01-15 | 2018-01-24 | 5 | 27d | 12d |  | 二期 | 64h |
| 27 | 1.5.9 | 人保开发 | manual | 20d | 2018-01-15 | 2018-02-09 | 5 |  |  |  |  |  |
| 28 | 1.5.10 | 全接口联通第一轮 | milestone | 0d | 2018-02-09 | 2018-02-09 | 26, 27 | 15d | 0d |  |  |  |

| ID | WBS | Task | Type | Duration | Start | Finish | Predecessors | Total slack | Free slack |
| --- | --- | --- | --- | --- | --- | --- | --- | --- | --- |
| 29 | 1.6 | **测试案例编写** |  | 14d | 2018-01-15 | 2018-02-01 |  | 38d |  |
| 30 | 1.6.1 | 流程测试案例编写 |  | 14d | 2018-01-15 | 2018-02-01 | 5 | 38d |  |
| 31 | 1.7 | **集成测试** |  | 17d | 2018-02-09 | 2018-03-06 |  | 15d |  |
| 32 | 1.7.1 | 交付业务开始测试 | milestone | 0d | 2018-02-09 | 2018-02-09 | 28 | 32d |  |
| 33 | 1.7.2 | 第一轮集成测试 |  | 10d | 2018-02-12 | 2018-02-23 | 28 | 15d | 0d |
| 34 | 1.7.3 | 第二轮集成测试 |  | 7d | 2018-02-26 | 2018-03-06 | 33 | 15d |  |
| 35 | 1.8 | **项目投产** |  | 1d | 2017-12-07 | 2017-12-07 |  | 0d |  |
| 36 | 1.8.1 | 外部依赖条件 | manual | 1d | 2017-12-07 | 2017-12-07 |  |  |  |
| 37 | 1.8.2 | 项目打包投产 | manual | 1d | 2017-12-07 | 2017-12-07 |  |  |  |
